# Project_Vizniuk

Schedule from MS Project, 2024-02-12 to 2024-11-12, status date 2024-03-15, costs in $, A marks actual dates.

## Calendars

- Стандартний: Mon-Fri 09:00-13:00, 14:00-18:00; Sat-Sun off.

## Resources

| Resource | Group | Rate | Notes |
| --- | --- | --- | --- |
| Project Manager | Project Manager | 12 | Project Manager - Степан Говда, досвід роботи на аналогічних проєктах 4 роки, рівень middle. |
| Business Analyst | Business Analyst | 8 | Business Analyst - Альона Бойко, досвід роботи на аналогічних проєктах 1 рік, рівень strong junior. |
| Front-end developer | Front-end developer | 14 | Front-end developer - Сергій Стефаник, досвід роботи на аналогічних проєктах 4 роки, рівень senior. |
| Back-end developer | Back-end developer | 12 | Back-end developer - Нікіта Остапчук, досвід роботи на аналогічних проєктах 2 роки, рівень middle. |
| UX/UI designe | UX/UI designer | 8 | UX/UI designer - Антоніна Черних, досвід роботи на аналогічних проєктах 1 рir, рівень strong junior. |
| QA developer | QA developer | 8 | QA developer - Анастасія Мельник, досвід роботи на аналогічних проєктах 1 рiк, рівень junior. |
| DevOps | DevOps | 9 | DevOps - Олег Шевченко, досвід роботи на аналогічних проєктах 2 рiки, рівень middle. |
| Програмне забезпечення та ліцензія |  | 2000 | Jira Software/ Zoom / Windows |
| Обладнання (сервер) |  | 2000 |  |
| Консультації фахівців |  | 8 |  |
| Офісні витрати |  | 500 |  |
| Бюджет проєкту |  |  |  |

## Schedule

| ID | WBS | Task | Type | Duration | Start | Finish | Predecessors | Complete | Remaining | Baseline start | Baseline finish | Baseline duration | Baseline 1 start | Baseline 1 finish | Resources | Work | Actual work | Cost | Baseline cost | Actual cost |
| --- | --- | --- | --- | --- | --- | --- | --- | --- | --- | --- | --- | --- | --- | --- | --- | --- | --- | --- | --- | --- |
| 1 | 1 | **Фаза 1. Бізнес та функціональні вимоги до проєкту** |  | 60d | 2024-02-12 A | 2024-05-03 |  | 36% | 38.51d | 2024-02-12 | 2024-05-03 | 60d | 2024-02-12 | 2024-05-03 |  | 1056h | 402h | 14,892 | 14,892 | 4,006 |
| 2 | 1.1 | **Проєктна документація** |  | 23d | 2024-02-12 A | 2024-03-13 A |  | 100% |  | 2024-02-12 | 2024-03-13 | 23d | 2024-02-12 | 2024-03-13 |  | 368h | 368h | 3,680 | 3,680 | 3,680 |
| 3 | 1.1.1 | Аналіз бізнес вимог | manual | 5d | 2024-02-12 A | 2024-02-16 A |  | 100% |  | 2024-02-12 | 2024-02-16 | 5d | 2024-02-12 | 2024-02-16 | Business Analyst; Project Manager | 80h | 80h | 800 | 800 | 800 |
| 4 | 1.1.2 | Обгрунтування проєкту | manual | 5d | 2024-02-19 A | 2024-02-23 A | 3 | 100% |  | 2024-02-19 | 2024-02-23 | 5d | 2024-02-19 | 2024-02-23 | Business Analyst; Project Manager | 80h | 80h | 800 | 800 | 800 |
| 5 | 1.1.3 | Схвалення бізнес-кейсу | manual | 5d | 2024-02-26 A | 2024-03-01 A | 4 | 100% |  | 2024-02-26 | 2024-03-01 | 5d | 2024-02-26 | 2024-03-01 | Business Analyst; Project Manager | 80h | 80h | 800 | 800 | 800 |
| 6 | 1.1.4 | Розробка і затвердження статуту | manual | 8d | 2024-03-04 A | 2024-03-13 A | 5 | 100% |  | 2024-03-04 | 2024-03-13 | 8d | 2024-03-04 | 2024-03-13 | Business Analyst; Project Manager | 128h | 128h | 1,280 | 1,280 | 1,280 |
| 7 | 1.2 | **Розробка технічного завдання** |  | 21d | 2024-03-14 A | 2024-04-11 | 6 | 5% | 20d | 2024-03-14 | 2024-04-11 | 21d | 2024-03-14 | 2024-04-11 |  | 600h | 34h | 5,928 | 5,928 | 326 |
| 8 | 1.2.1 | Розробка вимог до команди проєкту та ресурсів | manual | 8d | 2024-03-14 A | 2024-03-25 | 6 | 13% | 7d | 2024-03-14 | 2024-03-25 | 8d | 2024-03-14 | 2024-03-25 | Business Analyst; Project Manager; QA developer [25%]; UX/UI designe [25%]; Back-end developer [25%]; DevOps [25%]; Front-end developer [25%]; Консультації фахівців | 272h | 34h | 2,608 | 2,608 | 326 |
| 9 | 1.2.2 | Визначення зміст та меж | manual | 6d | 2024-03-26 | 2024-04-02 | 8 |  |  | 2024-03-26 | 2024-04-02 | 6d | 2024-03-26 | 2024-04-02 | Business Analyst [75%]; Project Manager [75%]; QA developer [25%]; UX/UI designe [25%]; Back-end developer [25%]; DevOps [25%]; Front-end developer [25%] | 132h |  | 1,332 | 1,332 |  |
| 10 | 1.2.3 | Розробка графіку виконання (плани ітерації) | manual | 7d | 2024-04-03 | 2024-04-11 | 9 |  |  | 2024-04-03 | 2024-04-11 | 7d | 2024-04-03 | 2024-04-11 | Business Analyst [50%]; QA developer [50%]; UX/UI designe [50%]; Back-end developer [50%]; Обладнання (сервер); DevOps [50%]; Front-end developer [50%]; Project Manager [50%] | 196h |  | 1,988 | 1,988 |  |
| 11 | 1.3 | **Закупівлі** |  | 23d | 2024-04-03 | 2024-05-03 | 9 |  |  | 2024-04-03 | 2024-05-03 | 23d | 2024-04-03 | 2024-05-03 |  | 88h |  | 5,284 | 5,284 |  |
| 12 | 1.3.1 | Планування закупівель | manual | 5d | 2024-04-03 | 2024-04-09 | 9 |  |  | 2024-04-03 | 2024-04-09 | 5d | 2024-04-03 | 2024-04-09 | Business Analyst [25%]; Project Manager [25%] | 20h |  | 200 | 200 |  |
| 13 | 1.3.2 | Розробка технічних вимог до закупівель | manual | 5d | 2024-04-10 | 2024-04-16 | 12 |  |  | 2024-04-10 | 2024-04-16 | 5d | 2024-04-10 | 2024-04-16 | Business Analyst [25%]; Project Manager [25%] | 20h |  | 200 | 200 |  |
| 14 | 1.3.3 | Тендерна процедура | manual | 12d | 2024-04-17 | 2024-05-02 | 13 |  |  | 2024-04-17 | 2024-05-02 | 12d | 2024-04-17 | 2024-05-02 | Business Analyst [50%]; QA developer | 48h |  | 384 | 384 |  |
| 15 | 1.3.4 | Постачання закупки | manual | 1d | 2024-05-03 | 2024-05-03 | 14 |  |  | 2024-05-03 | 2024-05-03 | 1d | 2024-05-03 | 2024-05-03 | Project Manager [50%]; Business Analyst [50%]; Обладнання (сервер); Програмне забезпечення та ліцензія; Офісні витрати |  |  | 4,500 | 4,500 |  |
| 16 | 2 | **Фаза 2. Конструювання та розробка проєкту** |  | 117d | 2024-04-12 | 2024-09-23 | 10 |  |  | 2024-04-12 | 2024-09-23 | 117d | 2024-04-12 | 2024-09-23 |  | 2390h |  | 27,078 | 27,078 |  |
| 17 | 2.1 | **Дизайн проєкту** |  | 26d | 2024-04-12 | 2024-05-17 | 10 |  |  | 2024-04-12 | 2024-05-17 | 26d | 2024-04-12 | 2024-05-17 |  | 208h |  | 1,664 | 1,664 |  |
| 18 | 2.1.1 | Розробка макетів | manual | 14d | 2024-04-12 | 2024-05-01 | 10 |  |  | 2024-04-12 | 2024-05-01 | 14d | 2024-04-12 | 2024-05-01 | UX/UI designe | 112h |  | 896 | 896 |  |
| 19 | 2.1.2 | Розгляд замовником | manual | 7d | 2024-05-02 | 2024-05-10 | 18 |  |  | 2024-05-02 | 2024-05-10 | 7d | 2024-05-02 | 2024-05-10 | UX/UI designe | 56h |  | 448 | 448 |  |
| 20 | 2.1.3 | Редагування та затвердження макетів | manual | 5d | 2024-05-13 | 2024-05-17 | 19 |  |  | 2024-05-13 | 2024-05-17 | 5d | 2024-05-13 | 2024-05-17 | UX/UI designe | 40h |  | 320 | 320 |  |
| 21 | 2.2 | **Розробка модулів (кодинг)** |  | 60d | 2024-05-20 | 2024-08-09 | 15, 20 |  |  | 2024-05-20 | 2024-08-09 | 60d | 2024-05-20 | 2024-08-09 |  | 1560h |  | 19,320 | 19,320 |  |
| 22 | 2.2.1 | Модуль навчання | manual | 12d | 2024-05-20 | 2024-06-04 | 15, 20 |  |  | 2024-05-20 | 2024-06-04 | 12d | 2024-05-20 | 2024-06-04 | Front-end developer; Back-end developer; DevOps [25%]; Project Manager | 312h |  | 3,864 | 3,864 |  |
| 23 | 2.2.2 | Модуль фінанси | manual | 12d | 2024-06-05 | 2024-06-20 | 22 |  |  | 2024-06-05 | 2024-06-20 | 12d | 2024-06-05 | 2024-06-20 | Front-end developer; Back-end developer; DevOps [25%]; Project Manager | 312h |  | 3,864 | 3,864 |  |
| 24 | 2.2.3 | Модуль комунікація | manual | 12d | 2024-06-21 | 2024-07-08 | 23 |  |  | 2024-06-21 | 2024-07-08 | 12d | 2024-06-21 | 2024-07-08 | Front-end developer; Back-end developer; DevOps [25%]; Project Manager | 312h |  | 3,864 | 3,864 |  |
| 25 | 2.2.4 | Модуль ресурси | manual | 12d | 2024-07-09 | 2024-07-24 | 24 |  |  | 2024-07-09 | 2024-07-24 | 12d | 2024-07-09 | 2024-07-24 | Back-end developer; Front-end developer; DevOps [25%]; Project Manager | 312h |  | 3,864 | 3,864 |  |
| 26 | 2.2.5 | Модуль студжиття | manual | 12d | 2024-07-25 | 2024-08-09 | 25 |  |  | 2024-07-25 | 2024-08-09 | 12d | 2024-07-25 | 2024-08-09 | Back-end developer; Front-end developer; DevOps [25%]; Project Manager | 312h |  | 3,864 | 3,864 |  |

| ID | WBS | Task | Type | Duration | Start | Finish | Predecessors | Baseline start | Baseline finish | Baseline duration | Baseline 1 start | Baseline 1 finish | Resources | Work | Cost | Baseline cost |
| --- | --- | --- | --- | --- | --- | --- | --- | --- | --- | --- | --- | --- | --- | --- | --- | --- |
| 27 | 2.3 | **Розробка структури бази даних** |  | 21d | 2024-05-06 | 2024-06-03 | 15 | 2024-05-06 | 2024-06-03 | 21d | 2024-05-06 | 2024-06-03 |  | 126h | 1,134 | 1,134 |
| 28 | 2.3.1 | Структура і зв'язки бази даних | manual | 15d | 2024-05-06 | 2024-05-24 | 15 | 2024-05-06 | 2024-05-24 | 15d | 2024-05-06 | 2024-05-24 | DevOps [75%] | 90h | 810 | 810 |
| 29 | 2.3.2 | Імпорт і форматування бази | manual | 6d | 2024-05-27 | 2024-06-03 | 28 | 2024-05-27 | 2024-06-03 | 6d | 2024-05-27 | 2024-06-03 | DevOps [75%] | 36h | 324 | 324 |
| 30 | 2.4 | **Тестування** |  | 31d | 2024-08-12 | 2024-09-23 | 22, 23, 24, 25, 26 | 2024-08-12 | 2024-09-23 | 31d | 2024-08-12 | 2024-09-23 |  | 496h | 4,960 | 4,960 |
| 31 | 2.4.1 | Функціональне тестування | manual | 7d | 2024-08-12 | 2024-08-20 | 26 | 2024-08-12 | 2024-08-20 | 7d | 2024-08-12 | 2024-08-20 | QA developer; Project Manager | 112h | 1,120 | 1,120 |
| 32 | 2.4.2 | Тестування інтерфейсу | manual | 7d | 2024-08-21 | 2024-08-29 | 31 | 2024-08-21 | 2024-08-29 | 7d | 2024-08-21 | 2024-08-29 | Project Manager; QA developer | 112h | 1,120 | 1,120 |
| 33 | 2.4.3 | Тестування продуктивності | manual | 7d | 2024-08-30 | 2024-09-09 | 32 | 2024-08-30 | 2024-09-09 | 7d | 2024-08-30 | 2024-09-09 | QA developer; Project Manager | 112h | 1,120 | 1,120 |
| 34 | 2.4.4 | "Юзабіліті" | manual | 10d | 2024-09-10 | 2024-09-23 | 33 | 2024-09-10 | 2024-09-23 | 10d | 2024-09-10 | 2024-09-23 | QA developer; Project Manager | 160h | 1,600 | 1,600 |
| 35 | 3 | **Фаза 3. Постачання продукту** |  | 36d | 2024-09-23 | 2024-11-12 | 34 | 2024-09-23 | 2024-11-12 | 36d | 2024-09-23 | 2024-11-12 |  | 636h | 6,806 | 6,806 |
| 36 | 3.1 | **Складання програмної документації** |  | 19d | 2024-09-23 | 2024-10-18 | 34 | 2024-09-23 | 2024-10-18 | 19d | 2024-09-23 | 2024-10-18 |  | 268h | 2,648 | 2,648 |
| 37 | 3.1.1 | Опис програми | manual | 9d | 2024-09-24 | 2024-10-04 | 34 | 2024-09-24 | 2024-10-04 | 9d | 2024-09-24 | 2024-10-04 | Project Manager [50%]; Business Analyst; DevOps | 108h | 1,008 | 1,008 |
| 38 | 3.1.2 | Інструкція користувача | manual | 10d | 2024-10-07 | 2024-10-18 | 37 | 2024-10-07 | 2024-10-18 | 10d | 2024-10-07 | 2024-10-18 | Project Manager; DevOps [50%]; QA developer [50%] | 160h | 1,640 | 1,640 |
| 39 | 3.2 | Перенос на сервер | manual | 5d | 2024-09-24 | 2024-09-30 | 34 | 2024-09-24 | 2024-09-30 | 5d | 2024-09-24 | 2024-09-30 | DevOps [75%]; Project Manager [25%]; Front-end developer [50%]; Back-end developer [50%] | 80h | 910 | 910 |
| 40 | 3.3 | Передача на підтримку | manual | 4d | 2024-10-01 | 2024-10-04 | 39 | 2024-10-01 | 2024-10-04 | 4d | 2024-10-01 | 2024-10-04 | Project Manager [50%]; DevOps | 48h | 480 | 480 |
| 41 | 3.4 | Навчання користувачів | manual | 8d | 2024-10-21 | 2024-10-30 | 38 | 2024-10-21 | 2024-10-30 | 8d | 2024-10-21 | 2024-10-30 | Front-end developer [50%]; Project Manager; Business Analyst [50%]; DevOps [25%]; Back-end developer [50%] | 176h | 2,000 | 2,000 |
| 42 | 3.5 | Закриття проєкту | manual | 8d | 2024-10-31 | 2024-11-11 | 41 | 2024-10-31 | 2024-11-11 | 8d | 2024-10-31 | 2024-11-11 | Project Manager | 64h | 768 | 768 |
| 43 | 4 | Перенос на сервер і передача на підтримку | milestone, manual | 0d? | 2024-09-27 | 2024-09-27 |  |  |  |  |  |  |  |  |  |  |
| 44 | 5 | Угода з постачальником | milestone, manual | 0d? | 2024-04-19 | 2024-04-19 |  |  |  |  |  |  |  |  |  |  |
| 45 | 6 | Готовий макет | milestone, manual | 0d? | 2024-05-17 | 2024-05-17 |  |  |  |  |  |  |  |  |  |  |
| 46 | 7 | Тестування "Юзабіліті" | milestone, manual | 0d? | 2024-09-23 | 2024-09-23 |  |  |  |  |  |  |  |  |  |  |
| 47 | 8 | Статут затверджено | milestone, manual | 0d? | 2024-03-08 | 2024-03-08 |  |  |  |  |  |  |  |  |  |  |
